# Date_Helper

Schedule from ProjectLibre, 2025-09-24 to 2026-03-25.

## Calendars

- Пятидневка: Mon-Fri 08:00-12:00, 13:00-17:00; Sat-Sun off.

## Resources

| Resource |
| --- |
| Не назначено |

## Schedule

| ID | WBS | Task | Duration | Start | Finish | Predecessors | Constraint |
| --- | --- | --- | --- | --- | --- | --- | --- |
| 1 | 1 | **Аналитика** | 2.29d | 2025-09-24 14:40 | 2025-09-29 08:00 |  | as late as possible |
| 2 | 1.1 | Формирование первичной темы ВКР | 0.21d | 2025-09-24 14:40 | 2025-09-24 16:20 |  | as late as possible |
| 3 | 1.2 | Проверка реализуемости темы (поиск решений и ограничений по открытым источникам) | 0.62d | 2025-09-24 16:20 | 2025-09-25 13:20 | 2 | as late as possible |
| 4 | 1.3 | Уточнение и корректировка темы совместно с научным руководителем | 0.21d | 2025-09-25 13:20 | 2025-09-25 15:00 | 3 | as late as possible |
| 5 | 1.4 | Повторная проверка реализуемости уточнённой темы (сравнение подходов/рисков) | 0.62d | 2025-09-25 15:00 | 2025-09-26 11:00 | 4 | as late as possible |
| 6 | 1.5 | Формирование и фиксация основной концепции решения | 0.21d | 2025-09-26 11:00 | 2025-09-26 13:40 | 5 | as late as possible |
| 7 | 1.6 | Анализ аналогов (функции, ограничения, применимость к задаче) | 0.21d | 2025-09-26 13:40 | 2025-09-26 15:20 | 6 | as late as possible |
| 8 | 1.7 | Анализ методов решения (OCR, CV-подходы, детекция) | 0.21d | 2025-09-26 15:20 | 2025-09-29 08:00 | 7 | finish no later than 2025-09-29 08:00 |
| 9 | 2 | **Данные** | 0.04d | 2025-11-12 11:00 | 2025-11-12 11:20 | 1 | as late as possible |
| 10 | 2.1 | Подготовка первичного набора данных для тестирования | 0.04d | 2025-11-12 11:00 | 2025-11-12 11:20 |  | as late as possible |
| 11 | 3 | **R&D** | 0.54d | 2025-11-12 11:20 | 2025-11-12 16:40 | 9 | as late as possible |
| 12 | 3.1 | Реализация прототипа метода №1 (OCR) | 0.25d | 2025-11-12 11:20 | 2025-11-12 14:20 |  | as late as possible |
| 13 | 3.2 | Запуск и первичная интеграция метода №1 | 0.12d | 2025-11-12 14:40 | 2025-11-12 15:40 | 12 | as late as possible |
| 14 | 3.3 | Тестирование и оценка метода №1 на тестовых данных | 0.12d | 2025-11-12 15:40 | 2025-11-12 16:40 | 13 | as late as possible |
| 15 | 3.4 | Реализация прототипа метода №2 (аналитический поиск области даты) | 0.12d | 2025-11-12 11:20 | 2025-11-12 13:20 | 12SS | as late as possible |
| 16 | 3.5 | Запуск и первичная интеграция метода №2 | 0.12d | 2025-11-12 13:20 | 2025-11-12 14:20 | 15 | as late as possible |
| 17 | 3.6 | Тестирование и сравнительная оценка метода №2 | 0.29d | 2025-11-12 14:20 | 2025-11-12 16:40 | 16 | as late as possible |
| 18 | 3.7 | Проработка и выбор метода №3 (детекция YOLO) | 0.21d | 2025-11-12 15:00 | 2025-11-12 16:40 | 15SS | as late as possible |
| 19 | 4 | **ML** | 86.88d? | 2025-11-12 16:40 | 2026-03-13 15:40 | 11 | as late as possible |
| 20 | 4.1 | Реализация базовой интеграции YOLO (подготовка окружения/запуск) | 0.04d? | 2025-11-12 16:40 | 2025-11-13 08:00 |  | finish no later than 2025-11-13 08:00 |
| 21 | 4.2 | Тестирование и первичная оценка качества метода №3 | 0.08d | 2026-03-13 15:00 | 2026-03-13 15:40 | 20 | as late as possible |
| 22 | 5 | **Проектирование** | 0.08d | 2026-03-13 15:40 | 2026-03-13 16:20 | 19 | as late as possible |
| 23 | 5.1 | Проработка сценария внедрения решения в систему (с научным руководителем) | 0.08d | 2026-03-13 15:40 | 2026-03-13 16:20 |  | as late as possible |
| 24 | 6 | **Документы** | 0.33d | 2026-03-13 16:20 | 2026-03-16 10:00 | 22 | as late as possible |
| 25 | 6.1 | Подготовка технического задания (ТЗ) | 0.33d | 2026-03-13 16:20 | 2026-03-16 10:00 |  | as late as possible |

| ID | WBS | Task | Duration | Start | Finish | Predecessors | Constraint |
| --- | --- | --- | --- | --- | --- | --- | --- |
| 26 | 7 | **Моб. приложение** | 3.83d | 2026-03-16 10:00 | 2026-03-20 08:40 | 24 | as late as possible |
| 27 | 7.1 | Реализовать экран сканирования: получение видеопотока, цикл обработки кадров (F1) | 0.5d | 2026-03-16 10:00 | 2026-03-16 15:00 |  | as late as possible |
| 28 | 7.2 | Реализовать отображение bbox/подсветки даты на экране (F2) | 0.25d | 2026-03-16 15:00 | 2026-03-16 17:00 | 27 | as late as possible |
| 29 | 7.3 | Реализовать сценарий «получить дату изготовления»: выбор способа (скан/вручную), валидация формата (F3) | 0.33d | 2026-03-17 08:00 | 2026-03-17 10:40 | 28 | as late as possible |
| 30 | 7.4 | Реализовать «положить продукт на хранение»: форма + сохранение (F4) | 0.42d | 2026-03-17 10:40 | 2026-03-17 15:00 | 29 | as late as possible |
| 31 | 7.5 | Реализовать «просмотреть продукты на хранении»: список, сортировка/поиск (минимально) (F5) | 0.42d | 2026-03-17 15:00 | 2026-03-18 09:20 | 30 | as late as possible |
| 32 | 7.6 | Реализовать «удалить продукт с хранения» + подтверждение (F6) | 0.17d | 2026-03-18 09:20 | 2026-03-18 10:40 | 31 | as late as possible |
| 33 | 7.7 | Реализовать регистрацию пользователя (UI + обработка ошибок) (F7) | 0.33d | 2026-03-18 10:40 | 2026-03-18 14:20 | 32 | as late as possible |
| 34 | 7.8 | Реализовать авторизацию пользователя и хранение токена/сессии (F8) | 0.33d | 2026-03-18 14:20 | 2026-03-18 17:00 | 33 | as late as possible |
| 35 | 7.9 | Реализовать отправку сообщения об ошибке: выбор/загрузка видео + комментарий (F9) | 0.42d | 2026-03-19 08:00 | 2026-03-19 11:20 | 34 | as late as possible |
| 36 | 7.10 | Встроенная разметка в рамках жалобы: инструмент выделения области и формирование YOLO-разметки (как часть F9/F15) | 0.67d | 2026-03-19 11:20 | 2026-03-20 08:40 | 35 | as late as possible |
| 37 | 8 | **Офлайн ML** | 1.33d | 2026-03-24 11:20 | 2026-03-25 15:00 | 26 | as late as possible |
| 38 | 8.1 | Интеграция офлайн-модели на устройстве (TFLite/NCNN), вызов инференса (F1, «офлайн») | 0.83d | 2026-03-24 11:20 | 2026-03-25 10:00 |  | as late as possible |
| 39 | 8.2 | Оптимизация скорости/памяти: пороги, уменьшение размера входа, замер FPS/latency (F1, требования по производительности) | 0.5d | 2026-03-25 10:00 | 2026-03-25 15:00 | 38 | as late as possible |
| 40 | 9 | **Бэкенд** | 3d | 2026-03-16 16:20 | 2026-03-19 16:20 | 26SS | as late as possible |
| 41 | 9.1 | Реализовать API авторизации/регистрации (эндпоинты + валидация) (F7, F8) | 0.58d | 2026-03-16 16:20 | 2026-03-17 12:00 |  | as late as possible |
| 42 | 9.2 | Реализовать API «хранилище»: add/list/delete + права доступа (F4–F6) | 0.67d | 2026-03-17 12:00 | 2026-03-18 09:20 | 41 | as late as possible |
| 43 | 9.3 | Реализовать API «детекция» (при необходимости серверного режима) (F1–F2) | 0.5d | 2026-03-18 09:20 | 2026-03-18 14:20 | 42 | as late as possible |
| 44 | 9.4 | Реализовать API «сообщения об ошибке»: приём видео+разметки+комментария, сохранение (F9) | 0.67d | 2026-03-18 14:20 | 2026-03-19 10:40 | 43 | as late as possible |
| 45 | 9.5 | Реализовать схему БД по ER: миграции, внешние ключи, индексы, ограничения (для F4–F14) | 0.58d | 2026-03-19 10:40 | 2026-03-19 16:20 | 44 | as late as possible |
| 46 | 10 | **Админка** | 2.67d | 2026-03-17 10:00 | 2026-03-19 16:20 | 26SS | as late as possible |
| 47 | 10.1 | Реализовать авторизацию администратора (F8 для админа) | 0.25d | 2026-03-17 10:00 | 2026-03-17 12:00 |  | as late as possible |
| 48 | 10.2 | Реализовать «просмотреть сообщения об ошибках» (F10) | 0.33d | 2026-03-17 12:00 | 2026-03-17 15:40 | 47 | as late as possible |
| 49 | 10.3 | Реализовать «удалить сообщения об ошибках» и отметку «обработано» (F11) | 0.25d | 2026-03-17 15:40 | 2026-03-18 08:40 | 48 | as late as possible |
| 50 | 10.4 | Реализовать «список пользователей» и «блокировка пользователя» (F12–F13) | 0.42d | 2026-03-18 08:40 | 2026-03-18 12:00 | 49 | as late as possible |
| 51 | 10.5 | Реализовать «статистика качества»: отчёты по версиям модели, динамика по времени (F14) | 0.67d | 2026-03-18 12:00 | 2026-03-19 09:20 | 50 | as late as possible |
| 52 | 10.6 | Доработка разметки видео (AnnotationTool): экспорт YOLO, проверка целостности, пакетная разметка (F15) | 0.75d | 2026-03-19 09:20 | 2026-03-19 16:20 | 51 | as late as possible |

| ID | WBS | Task | Duration | Start | Finish | Predecessors | Constraint |
| --- | --- | --- | --- | --- | --- | --- | --- |
| 53 | 11 | **ML** | 1.83d | 2026-03-19 16:20 | 2026-03-23 15:00 | 40, 46 | as late as possible |
| 54 | 11.1 | Подготовить конфиги обучения, пайплайн датасета, аугментации (F16) | 0.5d | 2026-03-19 16:20 | 2026-03-20 11:20 |  | as late as possible |
| 55 | 11.2 | Обучение/дообучение модели на накопленных примерах + сохранение версии/метрик (F16) | 0.83d | 2026-03-20 11:20 | 2026-03-23 10:00 | 54 | as late as possible |
| 56 | 11.3 | Оценка качества: тестовый прогон, расчёт метрик, сравнение версий (F14, F16) | 0.5d | 2026-03-23 10:00 | 2026-03-23 15:00 | 55 | as late as possible |
| 57 | 12 | **Интеграция** | 0.92d | 2026-03-23 15:00 | 2026-03-24 14:20 | 53 | as late as possible |
| 58 | 12.1 | Процедура обновления модели: деплой весов на сервер и обновление мобильной модели (F16, эксплуатация) | 0.5d | 2026-03-23 15:00 | 2026-03-24 10:00 |  | as late as possible |
| 59 | 12.2 | Тестирование отказов: нет сети, нет камеры, ошибки загрузки видео, лимиты размера (F1–F11) | 0.42d | 2026-03-24 10:00 | 2026-03-24 14:20 | 58 | as late as possible |
| 60 | 13 | **Документация** | 1.08d | 2026-03-24 14:20 | 2026-03-25 15:00 | 57 | as late as possible |
| 61 | 13.1 | Подготовка раздела «эксперименты и результаты»: описание датасета, сравнение методов, выводы (F14–F16) | 0.58d | 2026-03-24 14:20 | 2026-03-25 10:00 |  | as late as possible |
| 62 | 13.2 | Обновление диаграмм/описаний под финальную реализацию и подготовка презентации/демо (все ФТ) | 0.5d | 2026-03-25 10:00 | 2026-03-25 15:00 | 61 | as late as possible |
